# HouseHunter成本规划

Schedule from MS Project, 2020-03-01 to 2020-07-22, costs in ¥.

## Calendars

- 标准: Mon-Fri 08:00-12:00, 13:00-17:00; Sat-Sun off.

## Resources

| Resource |
| --- |
| UI专家 |
| 设计专家 |
| 项目经理 |
| 需求专家 |
| 质量专家 |
| 技术专家 |
| 测试员1 |
| 测试员2 |
| 程序员1 |
| 程序员2 |
| 程序员3 |
| 测试专家 |
| 闫昆 |
| 杜剑 |
| 李奥 |
| 卢旺达 |
| 郑芯蕊 |
| 郑 |
| y闫昆 |
| d杜剑 |

## Schedule

| ID | WBS | Task | Type | Duration | Start | Finish | Predecessors | Total slack | Resources | Work | Cost |
| --- | --- | --- | --- | --- | --- | --- | --- | --- | --- | --- | --- |
| 1 | 1 | **启动** |  | 8d | 2020-03-01 | 2020-03-11 |  |  |  | 64h | 2,000 |
| 2 | 1.1 | 组建核心团队 | manual | 3d | 2020-03-01 | 2020-03-04 |  |  | 闫昆 | 24h | 400 |
| 3 | 1.2 | 干系人分析 | manual | 2d | 2020-03-01 | 2020-03-03 |  |  | 杜剑 | 16h | 400 |
| 4 | 1.3 | 里程碑计划 | manual | 1d | 2020-03-01 | 2020-03-02 |  |  | 杜剑 | 8h | 400 |
| 5 | 1.4 | 制定项目章程 | manual | 1d | 2020-03-04 | 2020-03-05 | 2, 3, 4 |  | 杜剑 | 8h | 400 |
| 6 | 1.5 | 项目启动大会 | manual | 1d | 2020-03-05 | 2020-03-06 | 5 |  | 李奥 | 8h | 400 |
| 7 | 2 | **规划** |  | 35d? | 2020-03-11 | 2020-04-28 |  |  |  | 464h | 18,020 |
| 8 | 2.1 | **规划范围** |  | 13d | 2020-03-11 | 2020-03-30 |  | 0d |  | 320h | 11,920 |
| 9 | 2.1.1 | **需求分析** |  | 9d | 2020-03-11 | 2020-03-24 |  |  |  | 40h | 3,680 |
| 10 | 2.1.1.1 | 收集需求 | manual | 3d | 2020-03-11 | 2020-03-16 |  |  | 卢旺达 | 24h | 3,280 |
| 11 | 2.1.1.2 | 编写需求文档 | manual | 2d | 2020-03-20 | 2020-03-23 | 10 |  | 卢旺达 | 16h | 400 |
| 12 | 2.1.2 | **设计** |  | 13d | 2020-03-11 | 2020-03-30 |  |  |  | 280h | 8,240 |
| 13 | 2.1.2.1 | UI设计 | manual | 4d | 2020-03-11 | 2020-03-17 |  |  | 李奥 | 32h | 400 |
| 14 | 2.1.2.2 | 制定需求说明书 | manual | 6d | 2020-03-17 | 2020-03-25 | 13 |  | 李奥; 杜剑; 卢旺达; 闫昆 | 192h | 400 |
| 15 | 2.1.2.3 | 项目架构设计 | manual | 2d | 2020-03-25 | 2020-03-27 | 14 |  | 杜剑 | 16h | 400 |
| 16 | 2.1.2.4 | 编码规范的要求 | manual | 1d | 2020-03-27 | 2020-03-30 | 15 |  | 郑芯蕊 | 8h | 4,080 |
| 17 | 2.1.2.5 | 详细设计说明书 | manual | 1d | 2020-03-20 | 2020-03-23 |  |  | 杜剑 | 8h | 2,080 |
| 18 | 2.1.2.6 | 范围说明书 | manual | 1d | 2020-03-21 | 2020-03-23 |  |  | 杜剑 | 8h |  |
| 19 | 2.1.2.7 | 创建WBS | manual | 1d | 2020-03-26 | 2020-03-27 |  |  | 杜剑 | 8h | 480 |
| 20 | 2.1.2.8 | 行程范围基准 | milestone, manual | 1d | 2020-03-24 | 2020-03-25 |  |  | 杜剑 | 8h | 400 |
| 21 | 2.2 | **规划时间** |  | 5d? | 2020-03-28 | 2020-04-03 |  |  |  | 40h | 1,500 |
| 22 | 2.2.1 | 工作包排序 | manual | 1d | 2020-03-28 | 2020-03-30 | 20 |  | 李奥 | 8h | 400 |
| 23 | 2.2.2 | 估算资源 | manual | 1d | 2020-04-01 | 2020-04-02 | 22 |  | 李奥 | 8h | 800 |
| 24 | 2.2.3 | 估算持续时间 | manual | 1d | 2020-04-01 | 2020-04-02 |  |  | 李奥 | 8h | 100 |
| 25 | 2.2.4 | 制定进度计划 | manual | 2d | 2020-04-01 | 2020-04-03 |  |  | 卢旺达 | 16h | 200 |

| ID | WBS | Task | Type | Duration | Start | Finish | Predecessors | Resources | Work | Cost |
| --- | --- | --- | --- | --- | --- | --- | --- | --- | --- | --- |
| 26 | 2.3 | **规划成本** |  | 2d? | 2020-04-04 | 2020-04-07 |  |  | 16h | 600 |
| 27 | 2.3.1 | 项目成本估算 | manual | 1d | 2020-04-04 | 2020-04-06 |  | 闫昆 | 8h | 300 |
| 28 | 2.3.2 | 项目预算 | manual | 1d | 2020-04-05 | 2020-04-06 |  | 闫昆 | 8h | 300 |
| 29 | 2.4 | **规划质量** |  | 2d | 2020-04-10 | 2020-04-14 | 25 |  | 16h | 600 |
| 30 | 2.4.1 | 制定测试计划 | manual | 1d | 2020-04-11 | 2020-04-13 |  | 郑芯蕊 | 8h | 300 |
| 31 | 2.4.2 | 制定测试用例 | manual | 1d | 2020-04-12 | 2020-04-13 |  | 郑芯蕊 | 8h | 300 |
| 32 | 2.5 | **规划人力资源** |  | 2d? | 2020-04-15 | 2020-04-17 | 27 |  | 16h | 1,200 |
| 33 | 2.5.1 | 制定人力资源计划 | manual | 1d | 2020-04-16 | 2020-04-17 |  | 杜剑 | 8h | 1,000 |
| 34 | 2.5.2 | 制定人员配备管理计划 | manual | 1d | 2020-04-16 | 2020-04-17 | 25 | 杜剑 | 8h | 200 |
| 35 | 2.6 | **规划沟通** |  | 1d? | 2020-04-20 | 2020-04-21 | 30 |  | 8h | 300 |
| 36 | 2.6.1 | 制定沟通管理计划 | manual | 1d | 2020-04-20 | 2020-04-21 |  | 李奥 | 8h | 300 |
| 37 | 2.7 | **规划采购** |  | 2d? | 2020-04-21 | 2020-04-22 | 25 |  | 16h | 300 |
| 38 | 2.7.1 | 自制外购分析 | manual | 1d | 2020-04-21 | 2020-04-21 | 33 | 杜剑 | 8h | 200 |
| 39 | 2.7.2 | 制定采购文件 | manual | 1d | 2020-04-22 | 2020-04-22 |  | 杜剑 | 8h | 100 |
| 40 | 2.8 | **规划风险** |  | 3d? | 2020-04-23 | 2020-04-27 | 34 |  | 24h | 1,200 |
| 41 | 2.8.1 | 识别风险 | manual | 1d | 2020-04-23 | 2020-04-23 |  | 卢旺达 | 8h | 400 |
| 42 | 2.8.2 | 风险分析 | manual | 1d | 2020-04-24 | 2020-04-24 | 34 | 杜剑 | 8h | 400 |
| 43 | 2.8.3 | 制定风险登记册 | manual | 1d | 2020-04-27 | 2020-04-27 | 38 | 杜剑 | 8h | 400 |
| 44 | 2.9 | 规划整合 | manual | 1d | 2020-04-28 | 2020-04-28 |  | 闫昆 | 8h | 400 |
| 45 | 3 | **执行与监控** |  | 52d | 2020-04-29 | 2020-07-10 | 39 |  | 1096h | 21,920 |
| 46 | 3.1 | 组建项目团队 | manual | 1d | 2020-04-29 | 2020-04-29 | 41 | 李奥; 杜剑; 卢旺达; 闫昆; 郑芯蕊 | 40h | 400 |
| 47 | 3.2 | **项目执行** |  | 44d? | 2020-04-30 | 2020-06-30 | 42 |  | 664h | 13,360 |
| 48 | 3.2.1 | **用户模块** |  | 37d | 2020-04-30 | 2020-06-19 | 43 |  | 392h | 6,880 |
| 49 | 3.2.1.1 | 注册登录 | manual | 12d | 2020-04-30 | 2020-05-15 |  | 杜剑 | 96h | 400 |
| 50 | 3.2.1.2 | 首页 | manual | 3d | 2020-04-30 | 2020-05-04 | 7 | 李奥 | 24h | 400 |
| 51 | 3.2.1.3 | 浏览宾馆 | manual | 3d | 2020-05-05 | 2020-05-07 |  | 杜剑 | 24h | 400 |
| 52 | 3.2.1.4 | 搜索宾馆 | manual | 6d | 2020-05-08 | 2020-05-15 |  | 杜剑 | 48h | 400 |
| 53 | 3.2.1.5 | 认证 | manual | 2d | 2020-05-08 | 2020-05-11 |  | 杜剑 | 16h | 400 |
| 54 | 3.2.1.6 | 订单管理 | manual | 2d | 2020-05-12 | 2020-05-13 | 46 | 杜剑 | 16h | 400 |
| 55 | 3.2.1.7 | 聊天 | manual | 2d | 2020-05-14 | 2020-05-15 | 50 | 杜剑 | 16h | 400 |
| 56 | 3.2.1.8 | 个人配置 | milestone, manual | 2d | 2020-05-18 | 2020-05-19 |  | 杜剑 | 16h | 400 |

| ID | WBS | Task | Type | Duration | Start | Finish | Predecessors | Resources | Work | Cost |
| --- | --- | --- | --- | --- | --- | --- | --- | --- | --- | --- |
| 57 | 3.2.1.9 | **住户模块** |  | 6d | 2020-05-20 | 2020-05-28 | 51 |  | 96h | 1,680 |
| 58 | 3.2.1.9.1 | 宾馆种类 | manual | 4d | 2020-05-22 | 2020-05-27 | 53 | 李奥 | 32h | 400 |
| 59 | 3.2.1.9.2 | 宾馆价格 | manual | 3d | 2020-05-24 | 2020-05-27 | 54 | 李奥 | 24h | 400 |
| 60 | 3.2.1.9.3 | 收藏 | manual | 2d | 2020-05-25 | 2020-05-27 | 55 | 李奥 | 16h | 400 |
| 61 | 3.2.1.9.4 | 下单 | manual | 3d | 2020-05-25 | 2020-05-28 | 56 | 杜剑 | 24h | 480 |
| 62 | 3.2.1.10 | **卖家模块** |  | 7d | 2020-06-09 | 2020-06-17 | 57 |  | 40h | 2,000 |
| 63 | 3.2.1.10.1 | 宾馆信息发布 | manual | 5d | 2020-06-11 | 2020-06-17 | 58 | 杜剑 | 40h | 2,000 |
| 64 | 3.2.2 | 单元测试 | manual | 2d | 2020-06-18 | 2020-06-19 | 59 | 卢旺达 | 16h | 800 |
| 65 | 3.2.3 | **资源管理** |  | 9d | 2020-06-01 | 2020-06-12 | 60 |  | 48h | 1,280 |
| 66 | 3.2.3.1 | 资源录入 | manual | 2d | 2020-06-01 | 2020-06-03 | 61 | 杜剑 | 16h | 480 |
| 67 | 3.2.3.2 | 资源审核 | manual | 2d | 2020-06-03 | 2020-06-05 |  | 李奥 | 16h | 400 |
| 68 | 3.2.3.3 | 资源发布 | milestone, manual | 2d | 2020-06-05 | 2020-06-09 |  | 闫昆 | 16h | 400 |
| 69 | 3.2.4 | **管理模块** |  | 26d | 2020-05-01 | 2020-06-05 |  |  | 200h | 3,900 |
| 70 | 3.2.4.1 | 商品推送 | manual | 6d | 2020-05-01 | 2020-05-11 | 46 | 杜剑 | 48h | 2,000 |
| 71 | 3.2.4.2 | 广告管理 | manual | 4d | 2020-05-08 | 2020-05-13 |  | 杜剑 | 32h | 400 |
| 72 | 3.2.4.3 | 用户审核 | manual | 3d | 2020-05-14 | 2020-05-18 |  | 李奥 | 24h | 400 |
| 73 | 3.2.4.4 | 统计分析 | manual | 2d | 2020-05-19 | 2020-05-20 |  | 卢旺达 | 16h | 600 |
| 74 | 3.2.4.5 | 备份 | manual | 10d | 2020-05-21 | 2020-06-03 |  | 杜剑 | 80h | 500 |
| 75 | 3.2.5 | 单元测试 | manual | 1d | 2020-06-22 | 2020-06-22 | 64, 70 | 卢旺达 | 8h | 500 |
| 76 | 3.3 | **项目监控** |  | 19d? | 2020-05-16 | 2020-06-11 |  |  | 72h | 1,600 |
| 77 | 3.3.1 | 各项指标监控 | manual | 4d | 2020-05-16 | 2020-05-21 | 46 | 李奥 | 32h | 400 |
| 78 | 3.3.2 | 监控评审 | manual | 2d | 2020-05-17 | 2020-05-19 |  | 李奥 | 16h | 400 |
| 79 | 3.3.3 | 变更评审 | manual | 2d | 2020-05-20 | 2020-05-22 |  | 卢旺达 | 16h | 400 |
| 80 | 3.3.4 | 例会 | milestone, manual | 1d | 2020-05-12 | 2020-05-12 |  | 闫昆 | 8h | 400 |

| ID | WBS | Task | Type | Duration | Start | Finish | Predecessors | Resources | Work | Cost |
| --- | --- | --- | --- | --- | --- | --- | --- | --- | --- | --- |
| 81 | 3.4 | **管理干系人** |  | 6d | 2020-06-11 | 2020-06-19 | 76 |  | 72h | 1,200 |
| 82 | 3.4.1 | 发布项目信息 | manual | 5d | 2020-06-11 | 2020-06-18 | 77 | 杜剑 | 40h | 400 |
| 83 | 3.4.2 | 报告监控指标 | manual | 2d | 2020-06-16 | 2020-06-18 | 78 | 闫昆 | 16h | 400 |
| 84 | 3.4.3 | 干系人沟通 | manual | 2d | 2020-06-16 | 2020-06-18 |  | 郑芯蕊 | 16h | 400 |
| 85 | 3.5 | **团队建设** |  | 8d | 2020-06-20 | 2020-07-01 |  |  | 80h | 1,900 |
| 86 | 3.5.1 | 培训 | manual | 4d | 2020-06-21 | 2020-06-25 | 81 | 卢旺达 | 32h | 1,000 |
| 87 | 3.5.2 | 娱乐活动 | manual | 3d | 2020-06-23 | 2020-06-26 | 82 | 杜剑 | 24h | 600 |
| 88 | 3.5.3 | 沟通 | manual | 3d | 2020-06-24 | 2020-06-29 | 83 | 杜剑 | 24h | 300 |
| 89 | 3.6 | 定期检查 | manual | 3d | 2020-06-26 | 2020-07-01 | 84 | 李奥 | 24h | 1,200 |
| 90 | 3.7 | 项目验收 | manual | 3d | 2020-06-26 | 2020-07-01 |  | 闫昆 | 24h | 960 |
| 91 | 3.8 | **测试修改** |  | 20d | 2020-06-12 | 2020-07-10 | 86 |  | 120h | 1,300 |
| 92 | 3.8.1 | 测试前端 | manual | 5d | 2020-06-12 | 2020-06-19 |  |  |  | 400 |
| 93 | 3.8.2 | 测试检索功能 | manual | 5d | 2020-06-19 | 2020-06-26 | 46 | 郑芯蕊 | 40h | 300 |
| 94 | 3.8.3 | 测试后端 | manual | 5d | 2020-07-01 | 2020-07-08 | 89 | 郑芯蕊 | 40h | 200 |
| 95 | 3.8.4 | 测试数据库 | milestone, manual | 5d | 2020-07-03 | 2020-07-10 | 90 | 郑芯蕊 | 40h | 400 |
| 96 | 4 | **收尾** |  | 8d | 2020-07-10 | 2020-07-22 |  |  | 112h | 800 |
| 97 | 4.1 | 项目终验 | manual | 4d | 2020-07-10 | 2020-07-16 |  | 闫昆 | 32h | 400 |
| 98 | 4.2 | 结束采购 | manual | 6d | 2020-07-13 | 2020-07-21 |  | 闫昆 | 48h | 200 |
| 99 | 4.3 | 项目内部收尾 | manual | 4d | 2020-07-15 | 2020-07-21 |  | 闫昆 | 32h | 200 |
